# WeKeBA

Schedule from MS Project, 2014-09-01 to 2014-10-14, A marks actual dates.
ZHAW

## Calendars

- Standard: Mon-Tue 08:00-12:00, 13:00-17:00; Wed-Sun off.

## Resources

| Resource |
| --- |
| Tobias Keller |
| Tobias Welti |
| Valentin Schlatter |
| extern |

## Schedule

| ID | WBS | Task | Type | Duration | Start | Finish | Predecessors | Complete | Remaining | Total slack | Free slack | Constraint | Resources | Work | Actual work |
| --- | --- | --- | --- | --- | --- | --- | --- | --- | --- | --- | --- | --- | --- | --- | --- |
| 1 | 1 | **Software** |  | 13.75d | 2014-09-01 08:00 A | 2014-10-14 15:00 |  | 5% | 13.08d | 0d |  |  |  | 32.6h | 2.6h |
| 2 | 1.1 | A/D-Wandlung getaktet |  | 6h | 2014-09-15 08:00 | 2014-09-15 15:00 | 13 |  |  | 8d | 0d | start no earlier than 2014-09-15 08:00 | Tobias Keller | 6h |  |
| 3 | 1.2 | CAN-Bus in Betrieb nehmen |  | 5h | 2014-09-01 08:00 A | 2014-09-01 14:00 A |  | 100% |  |  |  |  | Tobias Keller | 2.6h | 2.6h |
| 4 | 1.3 | Ereigniserkennung |  | 8h | 2014-09-15 15:00 | 2014-09-16 15:00 | 2 |  |  | 8d |  |  | Tobias Welti | 8h |  |
| 5 | 1.4 | Timestamp |  | 4h | 2014-09-30 10:00 | 2014-09-30 15:00 | 34 |  |  | 4d |  | start no earlier than 2014-09-30 08:00 |  |  |  |
| 6 | 1.5 | Busprotokoll |  | 24h | 2014-09-30 15:00 | 2014-10-13 15:00 | 35 |  |  | 1d |  |  |  |  |  |
| 7 | 1.6 | UART-Kommandozeile |  | 16h | 2014-10-06 10:00 | 2014-10-13 10:00 | 36 |  |  | 1.5d |  |  |  |  |  |
| 8 | 1.7 | Filesystem |  | 8h | 2014-10-06 08:00 | 2014-10-06 17:00 | 34 |  |  | 0d |  | start no earlier than 2014-10-06 08:00 | Tobias Keller; Tobias Welti | 16h |  |
| 9 | 1.8 | Speicherung Datenlogger |  | 16h | 2014-10-07 15:00 | 2014-10-14 15:00 | 32 |  |  | 0d |  |  |  |  |  |
| 10 | 1.9 | Speicherung Sensoreinheit |  | 16h | 2014-09-01 13:00 | 2014-09-08 12:00 | 33 |  |  | 11.25d |  |  |  |  |  |
| 11 | 2 | **Hardware** |  | 13.25d | 2014-09-01 08:00 A | 2014-10-14 10:00 |  | 15% | 11.23d | 0.5d |  |  |  | 109.8h | 15.8h |
| 12 | 2.1 | Sensor auf Platte montiert | manual | 2h | 2014-09-08 13:00 | 2014-09-08 15:00 | 13 |  |  |  |  |  | Tobias Keller | 2h |  |
| 13 | 2.2 | Sensor anschliessen |  | 4h | 2014-09-08 08:00 A | 2014-09-08 12:00 |  | 50% | 2h | 9.5d | 0d |  | Tobias Keller; Tobias Welti | 5h | 1h |
| 14 | 2.3 | CAN-Bus/Transceiver |  | 4h | 2014-09-01 08:00 A | 2014-09-01 12:00 A |  | 100% |  |  |  |  | Tobias Keller | 4h | 4h |
| 15 | 2.4 | SD-Karte anschliessen |  | 1d | 2014-09-02 08:00 A | 2014-09-02 17:00 A |  | 100% |  |  |  |  | Tobias Keller; Tobias Welti | 8h | 8h |
| 16 | 2.5 | MS1: Hardware in Betrieb | milestone, manual | 0d | 2014-09-26 17:00 | 2014-09-26 17:00 |  |  |  |  |  |  |  |  |  |
| 17 | 2.6 | Gehäuse |  | 3h | 2014-09-29 13:00 | 2014-09-29 16:00 | 21 |  |  | 4.25d | 0d |  | Tobias Welti | 3h |  |
| 18 | 2.7 | Anschlüsse/Stecker |  | 5h | 2014-09-29 16:00 | 2014-09-30 12:00 | 17 |  |  | 4.25d |  |  | Tobias Welti | 5h |  |
| 19 | 2.8 | PCB Konzept | manual | 2h | 2014-09-21 08:00 A | 2014-09-21 10:00 A |  | 100% |  |  |  |  | Tobias Welti | 2h | 2h |
| 20 | 2.9 | PCB Schaltplan |  | 2h | 2014-09-29 08:00 A | 2014-09-29 10:00 A | 19 | 100% |  |  |  |  | Tobias Welti | 0.8h | 0.8h |
| 21 | 2.10 | PCB Layout |  | 2h | 2014-09-29 10:00 | 2014-09-29 12:00 | 20 |  |  | 0.5d | 0d |  | Tobias Welti | 2h |  |
| 22 | 2.11 | PCB Printen |  | 9.75d | 2014-09-29 13:00 | 2014-10-13 10:00 | 21 |  |  | 0.5d | 0d |  | extern | 78h |  |
| 23 | 2.12 | PCB Löten |  | 8h | 2014-10-13 10:00 | 2014-10-14 10:00 | 22 |  |  | 0.5d |  |  |  |  |  |
| 24 | 3 | **Tester** |  | 0.5d | 2014-09-01 08:00 | 2014-09-01 12:00 |  |  |  | 13.25d |  |  |  |  |  |
| 25 | 3.1 | Verifizierung |  | 4h | 2014-09-01 08:00 | 2014-09-01 12:00 |  |  |  | 13.25d |  |  |  |  |  |
| 26 | 3.2 | Analog-Generator |  | 4h | 2014-09-01 08:00 | 2014-09-01 12:00 |  |  |  | 13.25d |  |  |  |  |  |

| ID | WBS | Task | Duration | Start | Finish | Predecessors | Total slack | Free slack | Constraint | Resources | Work |
| --- | --- | --- | --- | --- | --- | --- | --- | --- | --- | --- | --- |
| 27 | 4 | **Dokumentation** | 4d | 2014-09-22 08:00 | 2014-09-30 17:00 |  | 3.75d |  |  |  | 16h |
| 28 | 4.1 | Pflichtenheft | 8h | 2014-09-22 08:00 | 2014-09-22 17:00 |  | 6.75d |  | finish no earlier than 2014-09-22 17:00 | Tobias Welti | 8h |
| 29 | 4.2 | Konzept-Doku | 8h | 2014-09-30 08:00 | 2014-09-30 17:00 |  | 3.75d |  | finish no earlier than 2014-09-30 17:00 | Tobias Welti | 8h |
| 30 | 5 | **Konzept** | 11.75d | 2014-09-01 08:00 | 2014-10-07 15:00 |  | 2d |  |  |  |  |
| 31 | 5.1 | **Software-Konzept** | 11.75d | 2014-09-01 08:00 | 2014-10-07 15:00 |  | 0d |  |  |  |  |
| 32 | 5.1.1 | Speicherkonzept Datenlogger | 6h | 2014-10-07 08:00 | 2014-10-07 15:00 | 8 | 0d |  |  |  |  |
| 33 | 5.1.2 | Speicherkonzept Sensoreinheit | 4h | 2014-09-01 08:00 | 2014-09-01 12:00 |  | 11.25d | 0d |  |  |  |
| 34 | 5.1.3 | Timestamp | 2h | 2014-09-30 08:00 | 2014-09-30 10:00 |  | 0.75d | 0d | start no earlier than 2014-09-30 08:00 |  |  |
| 35 | 5.1.4 | Busprotokoll | 4h | 2014-09-30 10:00 | 2014-09-30 15:00 | 34 | 1d | 0d |  |  |  |
| 36 | 5.1.5 | UART-Kommandozeile | 4h | 2014-09-30 15:00 | 2014-10-06 10:00 | 35 | 1.5d | 0d |  |  |  |
| 37 | 5.2 | **Hardware-Konzept** | 1d | 2014-09-15 08:00 | 2014-09-15 17:00 |  | 8.75d |  |  |  |  |
| 38 | 5.2.1 | Hardware-Konzept | 1d | 2014-09-15 08:00 | 2014-09-15 17:00 |  | 8.75d |  | start no earlier than 2014-09-15 08:00 |  |  |
